# 湖南长沙麓学220kV输变电工程（土建/电气安装）

Schedule from a web Gantt chart, 2025-04-09 to 2026-04-20.
Every day is a working day

## Schedule

| ID | WBS | Task | Duration | Start | Finish | Status |
| --- | --- | --- | --- | --- | --- | --- |
| 2 | 1 | 工程开工 | 1d | 2025-05-05 | 2025-05-05 | waiting |
| 3 | 2 | 办公区/生活区临建 | 26d | 2025-04-09 | 2025-05-04 | waiting |
| 4 | 3 | 围墙、消防水泵 基房、电抗器室柱 配电楼桩基 | 5d | 2025-04-09 | 2025-04-13 | waiting |
| 5 | 4 | 主变及散热器桩基 | 16d | 2025-05-08 | 2025-05-23 | waiting |
| 6 | 5 | 围墙基础 | 50d | 2025-04-14 | 2025-06-02 | waiting |
| 7 | 6 | 围墙主体施工 | 30d | 2025-06-03 | 2025-07-02 | waiting |
| 8 | 7 | 事故油池/消防水池土方开挖 | 3d | 2025-06-03 | 2025-06-05 | waiting |
| 9 | 8 | 配电楼桩基 | 24d | 2025-04-14 | 2025-05-07 | waiting |
| 10 | 9 | 事故油池/消防水池主体施工 | 50d | 2025-06-06 | 2025-07-25 | waiting |
| 11 | 10 | 全站接地施工 | 25d | 2025-07-26 | 2025-08-19 | waiting |
| 12 | 11 | 配电楼主体施工 | 50d | 2025-08-20 | 2025-10-08 | waiting |
| 13 | 12 | 全站给排水施工 | 15d | 2025-10-09 | 2025-10-23 | waiting |
| 14 | 13 | 主变及散垫器基 础施工 | 30d | 2025-10-24 | 2025-11-22 | waiting |
| 15 | 14 | 警卫室施工 | 24d | 2025-11-23 | 2025-12-16 | waiting |
| 16 | 15 | 站内外道路 | 5d | 2025-12-17 | 2025-12-21 | waiting |
| 17 | 16 | 转序验收 | 2d | 2025-12-22 | 2025-12-23 | waiting |
| 18 | 17 | 电气安装前期准备 | 2d | 2025-12-24 | 2025-12-25 |  |
| 19 | 18 | 220kVGIS配电装置到货 | 2d | 2025-12-26 | 2025-12-27 |  |
| 20 | 19 | 220kVGIS配电装置安装 | 15d | 2025-12-28 | 2026-01-11 |  |
| 21 | 20 | 110kVGIS配电装置到货 | 10d | 2026-01-12 | 2026-01-21 |  |
| 22 | 21 | 10kV高压开关柜配电装置到货 | 1d | 2026-01-22 | 2026-01-22 |  |
| 23 | 22 | 10kV高压开关柜配电装置安装 | 7d | 2026-01-23 | 2026-01-29 |  |
| 24 | 23 | 10kV电抗器装置到货及安装 | 10d | 2026-01-30 | 2026-02-08 |  |
| 25 | 24 | 主控室二次保护屏柜到货及安装 | 6d | 2026-02-09 | 2026-02-14 |  |
| 26 | 25 | 全站电缆敷设及二次接线 | 20d | 2026-03-01 | 2026-03-20 |  |
| 27 | 26 | 220kV主变压器就位 | 3d | 2026-03-05 | 2026-03-07 |  |
| 28 | 27 | 220kV主变压器安装 | 20d | 2026-03-08 | 2026-03-27 |  |
| 29 | 28 | 全站综自调试、回路核对、试验 | 20d | 2026-04-01 | 2026-04-20 |  |
